# 基础架构项目计划v2.0

Schedule from MS Project, 2018-09-20 to 2018-12-03, A marks actual dates.

## Calendars

- 标准: Mon-Fri 08:00-12:00, 13:00-17:00; Sat-Sun off. Exceptions (off unless hours are given): 2018-09-24 (中秋节假期), 2018-09-29 to 2018-09-30 08:00-12:00, 13:00-17:00 (调休), 2018-10-01 to 2018-10-05 (国庆节假期).

## Resources

| Resource | Group | Notes |
| --- | --- | --- |
| 毕方娅 | 前端 | 2 |
| 刘然 | JAVA | 3 |
| 杨婧 | JAVA | 3 |
| 冯岭子 | JAVA | 0 |
| 周凯恒 | 前端 | 0 |
| 龙江 | JAVA | 0 |
| 邓翔天 | JAVA | 0 |
| 曲佳 | 测试 | 4 |
| 文陈陈 | 测试 | 0 |
| 陈元露 | 测试 | 0 |
| UI/UE | UX |  |
| 马平川 | 前端 | 0 |
| 王丹青 | JAVA | 0 |
| 张润丰 | 前端 | 0 |
| 何鹏 | JAVA | 0 |
| 熊超然 | 前端 | 0 |
| 韦于评 | JAVA | 0 |
| 罗伊 | 前端 | 1 |
| 刘诗雨 | JAVA | 3 |
| 温文宪 | JAVA | 2 |
| 袁园 | 前端 | 1 |
| 周鑫 | JAVA | 1 |
| 陈通 | JAVA | 0 |
| 陈远超 |  |  |
| 向妤 | JAVA | 1 |
| 饶益博 | 前端 | 2 |
| 张恒源 | JAVA | 0 |
| 张建军 | 前端 | 2 |
| 贺思思 | 前端 | 1 |
| 马友文 | JAVA | 1 |
| 郭柱材 | JAVA | 0 |
| 杨开平 | JAVA | 0 |
| 欧鹏 | 测试 | 10 |
| 张洋华 | 测试 | 2 |
| 蔡捷 | 前端 | 0 |
| 唐启韬 | 前端 | 2 |

## Schedule

| ID | WBS | Task | Type | Duration | Start | Finish | Predecessors | Complete | Remaining | Total slack | Free slack | Constraint |
| --- | --- | --- | --- | --- | --- | --- | --- | --- | --- | --- | --- | --- |
| 1 | 1 | **基础架构** |  | 49d | 2018-09-20 A | 2018-12-03 |  | 20% | 39.44d | 0d |  |  |
| 2 | 1.1 | **INFRA-WORKING-CMMI** |  | 49d | 2018-09-20 A | 2018-12-03 |  | 20% | 39.44d | 0d |  |  |
| 3 | 1.1.1 | **ENVISION** |  | 6d | 2018-09-20 A | 2018-09-28 A |  | 100% |  |  |  |  |
| 4 | 1.1.1.1 | 确定系统愿景与范围 |  | 1d | 2018-09-20 A | 2018-09-20 A |  | 100% |  |  |  | start no earlier than 2018-09-20 |
| 5 | 1.1.1.2 | 拟定SOW |  | 1d | 2018-09-21 A | 2018-09-21 A | 4 | 100% |  |  |  |  |
| 6 | 1.1.1.3 | 收集需求 |  | 1d | 2018-09-25 A | 2018-09-25 A | 5 | 100% |  |  |  |  |
| 7 | 1.1.1.4 | 分析功能需求 |  | 1d | 2018-09-26 A | 2018-09-26 A | 6 | 100% |  |  |  |  |
| 8 | 1.1.1.5 | 分析非功能需求与其他技术限制 |  | 1d | 2018-09-27 A | 2018-09-27 A | 7 | 100% |  |  |  |  |
| 9 | 1.1.1.6 | 技术选型与PoC验证 |  | 1d | 2018-09-28 A | 2018-09-28 A | 8 | 100% |  |  |  |  |
| 10 | 1.1.1.7 | 展望阶段完成 | milestone | 0d | 2018-09-28 A | 2018-09-28 A | 9 | 100% |  |  |  |  |
| 11 | 1.1.2 | **PLANNING/DESIGN** |  | 11d | 2018-09-29 A | 2018-10-18 |  | 95% | 0.5d | 32d |  |  |
| 12 | 1.1.2.1 | 原型设计 |  | 3d | 2018-09-29 A | 2018-10-08 A | 3 | 100% |  |  |  |  |
| 13 | 1.1.2.2 | 需求规格说明书 |  | 3d | 2018-09-29 A | 2018-10-08 A | 3 | 100% |  |  |  |  |
| 14 | 1.1.2.3 | 需求评审 |  | 1d | 2018-10-09 A | 2018-10-09 A | 12, 13 | 100% |  |  |  |  |
| 15 | 1.1.2.4 | UI设计 |  | 2d | 2018-10-10 A | 2018-10-11 A | 14 | 100% |  |  |  |  |
| 16 | 1.1.2.5 | 架构设计 |  | 2d | 2018-10-10 A | 2018-10-11 A | 14 | 100% |  |  |  |  |
| 17 | 1.1.2.6 | 数据库设计 |  | 2d | 2018-10-10 A | 2018-10-11 A | 14 | 100% |  |  |  |  |
| 18 | 1.1.2.7 | 测试计划 |  | 1d | 2018-10-10 | 2018-10-10 | 14 |  |  | 38d |  |  |
| 19 | 1.1.2.8 | 方案评审 |  | 1d | 2018-10-12 A | 2018-10-12 A | 15, 16 | 100% |  |  |  |  |
| 20 | 1.1.2.9 | 制定开发计划 |  | 1d | 2018-10-10 A | 2018-10-10 A | 14 | 100% |  |  |  |  |
| 21 | 1.1.2.10 | 开发与测试环境搭建 |  | 1d | 2018-10-10 A | 2018-10-10 A | 14 | 100% |  |  |  |  |
| 22 | 1.1.2.11 | 设计文档 |  | 5d | 2018-10-12 A | 2018-10-18 A | 16 | 100% |  |  |  |  |
| 23 | 1.1.2.12 | 设计阶段完成 | milestone | 0d | 2018-10-18 | 2018-10-18 | 22 |  |  | 32d |  |  |
| 24 | 1.1.3 | **DEVELOP** |  | 15d | 2018-10-15 A | 2018-11-02 |  | 2% | 14.73d | 21d |  |  |
| 25 | 1.1.3.1 | **用户组织管理** |  | 10d | 2018-10-15 A | 2018-10-26 |  | 8% | 9.21d | 1d |  |  |
| 26 | 1.1.3.1.1 | 接口开发 |  | 5d | 2018-10-15 A | 2018-10-19 | 19 | 30% | 3.5d | 1d | 0d |  |
| 248 | 1.1.3.1.2 | 单元测试 |  | 4d | 2018-10-16 | 2018-10-19 | 26FF |  |  | 1d | 0d |  |
| 28 | 1.1.3.1.3 | 界面开发 |  | 5d | 2018-10-15 | 2018-10-19 | 19 |  |  | 1d | 0d |  |
| 29 | 1.1.3.1.4 | 前后端集成 |  | 5d | 2018-10-22 | 2018-10-26 | 28, 248 |  |  | 1d | 0d |  |
| 251 | 1.1.3.1.5 | 用户组织管理开发完毕 | milestone | 0d | 2018-10-26 | 2018-10-26 | 29 |  |  | 1d | 0d |  |

| ID | WBS | Task | Type | Duration | Start | Finish | Predecessors | Total slack | Free slack |
| --- | --- | --- | --- | --- | --- | --- | --- | --- | --- |
| 31 | 1.1.3.2 | **角色权限管理** |  | 10d | 2018-10-19 | 2018-11-01 |  | 1d |  |
| 32 | 1.1.3.2.1 | 接口开发 |  | 5d | 2018-10-19 | 2018-10-25 | 22 | 1d | 0d |
| 254 | 1.1.3.2.2 | 单元测试 |  | 4d | 2018-10-22 | 2018-10-25 | 32FF | 1d | 0d |
| 34 | 1.1.3.2.3 | 界面开发 |  | 5d | 2018-10-19 | 2018-10-25 | 22 | 1d | 0d |
| 35 | 1.1.3.2.4 | 前后端集成 |  | 5d | 2018-10-26 | 2018-11-01 | 254, 34 | 1d | 0d |
| 257 | 1.1.3.2.5 | 角色权限开发完毕 | milestone | 0d | 2018-11-01 | 2018-11-01 | 35 | 1d |  |
| 37 | 1.1.3.3 | **日志管理** |  | 4d | 2018-10-29 | 2018-11-01 |  | 1d |  |
| 38 | 1.1.3.3.1 | 接口开发 |  | 2d | 2018-10-29 | 2018-10-30 | 251 | 1d | 0d |
| 260 | 1.1.3.3.2 | 单元测试 |  | 2d | 2018-10-29 | 2018-10-30 | 38FF | 1d | 0d |
| 40 | 1.1.3.3.3 | 界面开发 |  | 2d | 2018-10-29 | 2018-10-30 | 251 | 1d | 0d |
| 41 | 1.1.3.3.4 | 前后端集成 |  | 2d | 2018-10-31 | 2018-11-01 | 260, 40 | 1d | 0d |
| 263 | 1.1.3.3.5 | 日志管理开发完毕 | milestone | 0d | 2018-11-01 | 2018-11-01 | 41 | 1d |  |
| 43 | 1.1.3.4 | **用户行为分析** |  | 15d | 2018-10-15 | 2018-11-02 |  | 0d |  |
| 44 | 1.1.3.4.1 | 行为分析业务场景挖掘 |  | 5d | 2018-10-15 | 2018-10-19 | 19 | 0d |  |
| 45 | 1.1.3.4.2 | 接口开发 |  | 5d | 2018-10-22 | 2018-10-26 | 44 | 0d |  |
| 267 | 1.1.3.4.3 | 单元测试 |  | 3d | 2018-10-24 | 2018-10-26 | 45FF | 0d |  |
| 47 | 1.1.3.4.4 | 界面开发 |  | 5d | 2018-10-22 | 2018-10-26 | 44 | 0d |  |
| 48 | 1.1.3.4.5 | 前后端集成 |  | 5d | 2018-10-29 | 2018-11-02 | 267, 47 | 0d |  |
| 270 | 1.1.3.4.6 | 行为分析开发完毕 | milestone | 0d | 2018-11-02 | 2018-11-02 | 48 | 0d |  |
| 50 | 1.1.3.5 | 代码走查 |  | 2d | 2018-10-26 | 2018-10-29 | 254 | 25d |  |
| 51 | 1.1.3.6 | 编写测试用例 |  | 10d | 2018-10-15 | 2018-10-26 | 19 | 25d | 0d |
| 52 | 1.1.3.7 | 测试用例评审 |  | 1d | 2018-10-29 | 2018-10-29 | 51 | 25d |  |
| 274 | 1.1.3.8 | 开发阶段完成 | milestone | 0d | 2018-11-02 | 2018-11-02 | 25, 31, 37, 43 | 0d |  |
| 54 | 1.1.4 | **STABILIZE** |  | 16d | 2018-11-05 | 2018-11-26 |  | 0d |  |
| 55 | 1.1.4.1 | 系统测试 |  | 10d | 2018-11-05 | 2018-11-16 | 274 | 0d |  |
| 56 | 1.1.4.2 | Bug修改 |  | 10d | 2018-11-07 | 2018-11-20 | 55SS+2d | 0d |  |
| 57 | 1.1.4.3 | 性能测试 |  | 2d | 2018-11-21 | 2018-11-22 | 56 | 0d |  |
| 58 | 1.1.4.4 | 验收测试 |  | 1d | 2018-11-23 | 2018-11-23 | 57 | 0d |  |
| 59 | 1.1.4.5 | 测试报告 |  | 1d | 2018-11-26 | 2018-11-26 | 58 | 0d |  |
| 60 | 1.1.4.6 | 用户手册 |  | 5d | 2018-11-05 | 2018-11-09 | 274 | 9d | 0d |
| 61 | 1.1.4.7 | 部署文档 |  | 2d | 2018-11-12 | 2018-11-13 | 60 | 9d |  |

| ID | WBS | Task | Duration | Start | Finish | Predecessors | Total slack |
| --- | --- | --- | --- | --- | --- | --- | --- |
| 62 | 1.1.5 | **DEVELOP/OPERATE** | 5d | 2018-11-27 | 2018-12-03 |  | 0d |
| 63 | 1.1.5.1 | 交付物准备 | 2d | 2018-11-27 | 2018-11-28 | 54 | 0d |
| 64 | 1.1.5.2 | 部署上线 | 1d | 2018-11-29 | 2018-11-29 | 63 | 0d |
| 65 | 1.1.5.3 | 验收报告 | 1d | 2018-11-30 | 2018-11-30 | 64 | 0d |
| 66 | 1.1.5.4 | 经验教训总结 | 1d | 2018-12-03 | 2018-12-03 | 65 | 0d |
